# Proje1maliyetli

Schedule from MS Project, 2016-11-08 to 2017-10-02, costs in ₺.

## Calendars

- Standart: Mon-Fri 08:00-12:00, 13:00-17:00; Sat-Sun off.

## Resources

| Resource | Rate | Cost per use |
| --- | --- | --- |
| GESER PAREX A.Ş Satın Alma Departmanı |  |  |
| Zübeyde Hanım Ortaokulunun Yönetim Kurulu |  |  |
| İç Mimar |  |  |
| İnşaat Yöneticisi |  |  |
| Zübeyde Hanım Ortaokulunun Müdürü |  |  |
| İç Cephe Çalışanları |  |  |
| Alauç A.Ş. Tasarım Ekibi |  | 300 |
| Alauç A.Ş. Satın Alma Departmanı |  |  |
| Alauç A.Ş. Proje Yöneticisi |  |  |
| Apple inc. Satın Alma Departmanı |  |  |
| İpad Pro | 4249 | 3271730 |
| Apple Pencil | 379 | 291830 |
| Parmak İzi Okuyan Sensör | 277.6 | 213752 |
| Basınç Ölçen Sensör | 250 | 192500 |
| iMac | 6099 | 182970 |
| Zübeyde Hanım Ortaokulu Eğitim Teknoloğu |  | 450 |
| isı- Ses Yalıtım Sıvası - Camlı Sıva 1PKT T32 |  | 109100 |
| Valiodor Classic VDM ATLANTİS YALITIMLI KAPI | 365 | 8030 |
| EV OFİS CAM FİLMİ ISI YALITIMLI 75 CM * 10 MT | 40 | 2640 |
| VİKO CARMEN ANAHTAR BEYAZ/TV SONLU | 11.99 | 263.78 |
| VİKO KARE TOPRAKLI PRİZ ÇERÇEVE DAHİL | 5.4 | 950.4 |
| VİK MULTİ-LED 6lı Priz Anahtarlı,Topraklı, Çocuk Korumalı KLEMENSLİ - Beyaz | 21.9 | 5299.8 |
| DIALL FLORASAN AMPUL E27 15/65 WATT) | 9.99 | 219.78 |
| iPad Pro 12.9 | 4249 | 3271730 |
| Parmak izi okuyucu sensor/ growe | 277.6 | 213752 |
| HT - 163 Basınç ısı nem ölçer usb data loger | 250 | 192500 |
| iPad Pro için Apple Pencil | 379 | 291830 |
| 21,5 inc retina 4k ekranlı imac | 6099 | 182970 |
| lc fiber patch kablo 3 mt | 62 | 372 |
| MM-50/125 OM3 Merkezi Tüplü Çelik Zırhlı Dahili/Harici LSZH Fiber OptikKablo | 6000 | 6000 |
| Zyxel XGS-4728F SWiTCH | 1855980 | 185598 |
| TP-LINK ARCHER VR900 1900 MBPS WIRELESS DUVAL BANT GIGABIT VDSL2 MODEM ROUTER | 659 | 3954 |
| Alauç A.Ş. Yazılım Test Ekibi |  | 1500 |
| Siyah Prestige Blackout Stor Perde | 36 | 2376 |
| Alauç A.Ş. Teknik Kurulum Ekibi |  | 36000 |
| Alauç A.Ş. Yazılım Geliştirme Ekibi Lideri |  | 48000 |
| Alauç A.Ş. Yazılım Mühendisleri |  | 128000 |

## Schedule

| ID | WBS | Task | Type | Duration | Start | Finish | Predecessors | Total slack | Constraint | Resources | Work | Cost |
| --- | --- | --- | --- | --- | --- | --- | --- | --- | --- | --- | --- | --- |
| 1 | 0 | **Yenilik Okulda** |  | 235d | 2016-11-08 | 2017-10-02 |  |  |  |  | 4504h | 4,891,415.78 |
| 2 | 1 | **Proje Yöneticisinin Proje Başlatma Belgesinin Hazırlanması** |  | 21d | 2016-11-08 | 2016-12-07 |  |  |  | Alauç A.Ş. Proje Yöneticisi | 168h |  |
| 3 | 1.1.1 | Hedef Doğrultusunda Kaynakların Belirlenmesi |  | 5d | 2016-11-17 | 2016-11-23 |  | 223d | finish no earlier than 2016-11-23 |  |  |  |
| 4 | 1.1.2 | Proje Gereksinim Listesini Yapma |  | 1d | 2016-11-09 | 2016-11-09 |  | 20d |  |  |  |  |
| 5 | 1.1.3 | Hedef Doğrultusundan Çalışanların Belirlenmesi |  | 3d | 2016-11-09 | 2016-11-11 |  | 18d |  |  |  |  |
| 6 | 1.1.4 | Rolleri ve Sorumlulukları Belirleme |  | 2d | 2016-11-09 | 2016-11-10 |  | 19d |  |  |  |  |
| 7 | 1.1.5 | İş Kırılım Yapısını Hazırlama |  | 1d | 2016-11-09 | 2016-11-09 |  | 20d |  |  |  |  |
| 8 | 1.1.6 | Ürün Kabul Kriterlerinin Belirlenmesi |  | 1d | 2016-11-09 | 2016-11-09 |  | 20d |  |  |  |  |
| 9 | 1.1.7 | Proje Kalite Ölçütlerinin Belirlenmesi |  | 1d | 2016-11-09 | 2016-11-09 |  | 20d |  |  |  |  |
| 10 | 1.1.8 | Proje Kalite Kontrol Standartlarının Belirlenmesi |  | 1d | 2016-11-09 | 2016-11-09 |  | 20d |  |  |  |  |
| 11 | 1.1.9 | Proje İçin Teknik Şartnamenin Hazırlanması |  | 4d | 2016-11-09 | 2016-11-14 |  | 17d |  |  |  |  |
| 12 | 1.1.10 | Proje Başlatma Belgesinin Onaylanması |  | 2d | 2016-11-09 | 2016-11-10 |  | 19d |  |  |  |  |
| 13 | 2 | **Sınıflar ve Laboratuvarlar İçin Tasarım İzinlerinin Alınması** |  | 16d | 2016-11-09 | 2016-11-30 | 2 |  |  |  | 136h |  |
| 14 | 1.2.1 | Belediyeden Tasarım İzinlerinin Alınması |  | 15d | 2016-11-09 | 2016-11-29 |  | 1d |  | İnşaat Yöneticisi | 120h |  |
| 15 | 2.1 | İzinlerin İmzalanma İşleminin Gerçekleşmesi |  | 2d | 2016-11-29 | 2016-11-30 |  | 218d | start no earlier than 2016-11-29 | Zübeyde Hanım Ortaokulunun Müdürü | 16h |  |
| 16 | 3 | **Sınıf ve Laboratuvarların Tasarımının Yapılması** |  | 17d | 2016-12-30 | 2017-01-23 | 13 |  |  | Zübeyde Hanım Ortaokulunun Yönetim Kurulu | 312h | 300 |
| 17 | 3.1 | Tasarımcılar ile Anlaşma | manual | 2d | 2016-12-30 | 2017-01-02 |  |  |  | Alauç A.Ş. Tasarım Ekibi; Zübeyde Hanım Ortaokulunun Yönetim Kurulu | 32h | 300 |
| 18 | 3.2 | Sınıf ve Laboratuvarların Çizimlerinin Yapılması | manual | 4d | 2017-01-02 | 2017-01-06 |  |  |  | İç Mimar | 96h |  |
| 19 | 3.3 | Yapılan Sınıf ve Laboratuvar Çizimlerinin Onaylanması | manual | 3d | 2017-01-19 | 2017-01-23 |  |  |  | Zübeyde Hanım Ortaokulunun Müdürü; Zübeyde Hanım Ortaokulunun Yönetim Kurulu | 48h |  |
| 20 | 1.4 | **Sınıf ve Laboratuvarların Boşaltılması İşlemlerinin Yapılması** |  | 10d | 2017-01-23 | 2017-02-03 | 16 |  |  | İç Cephe Çalışanları | 80h |  |
| 21 | 1.4.1 | Sınıf ve Laboratuvarlardan Projeksiyonların Sökülmesi | manual | 10d | 2017-01-23 | 2017-02-03 |  |  |  |  |  |  |
| 22 | 1.4.2 | Sınıf ve Laboratuvarlardan Bilgisayarların Çıkartırılması | manual | 10d | 2017-01-23 | 2017-02-03 |  |  |  |  |  |  |
| 23 | 1.4.3 | Sınıf ve Laboratuvarlardan Dolapların Çıkartırılması | manual | 10d | 2017-01-23 | 2017-02-03 |  |  |  |  |  |  |
| 24 | 1.4.4 | Sınıf ve Laboratuvarlardan Akıllı Tahtaların Çıkartırılması | manual | 10d | 2017-01-23 | 2017-02-03 |  |  |  |  |  |  |
| 25 | 1.4.5 | Sınıf ve Laboratuvarlardan Masaların Çıkartırılması | manual | 10d | 2017-01-23 | 2017-02-03 |  |  |  |  |  |  |
| 26 | 1.4.6 | Sınıf ve Laboratuvarlardan Sandalyelerin Çıkartırılması | manual | 10d | 2017-01-23 | 2017-02-03 |  |  |  |  |  |  |
| 27 | 1.4.7 | Sınıf ve Laboratuvarlardan Klimaların Çıkartırılması | manual | 10d | 2017-01-23 | 2017-02-03 |  |  |  |  |  |  |

| ID | WBS | Task | Type | Duration | Start | Finish | Predecessors | Total slack | Resources | Work | Cost |
| --- | --- | --- | --- | --- | --- | --- | --- | --- | --- | --- | --- |
| 28 | 4 | **Binanın Isı, Işık ve Ses Yalıtımı ve Boya için Gerekli İşlemlerinin Yapılması** |  | 9d | 2017-01-23 | 2017-02-02 | 20 |  |  | 216h | 257,097.98 |
| 29 | 4.1 | Sınıflar ve Laboratuvarlar İçin İç Mantolama, Işık Yalıtım ve Ses Yalıtım Malzemelerin Alınması | manual | 2.88d | 2017-01-23 | 2017-01-25 |  |  | GESER PAREX A.Ş Satın Alma Departmanı; isı- Ses Yalıtım Sıvası - Camlı Sıva 1PKT T32 [132000%] | 56h | 109,100 |
| 30 | 1.5.2 | Kapıların Alınması | manual | 7d | 2017-01-23 | 2017-01-31 |  |  | Valiodor Classic VDM ATLANTİS YALITIMLI KAPI [2200%] |  | 8,030 |
| 31 | 1.5.3 | Cam Filmi Alınması | manual | 7d | 2017-01-23 | 2017-01-31 |  |  | EV OFİS CAM FİLMİ ISI YALITIMLI 75 CM * 10 MT [6600%] |  | 109,100 |
| 32 | 1.5.4 | Elektrik Sistemleri İçin Anahtarların Alınması | manual | 7d | 2017-01-23 | 2017-01-31 |  |  | VİKO CARMEN ANAHTAR BEYAZ/TV SONLU [2200%] |  | 263.78 |
| 33 | 1.5.5 | Duvardaki Prizlerin Alınması | manual | 7d | 2017-01-23 | 2017-01-31 |  |  | VİKO KARE TOPRAKLI PRİZ ÇERÇEVE DAHİL [24200%] |  | 950.4 |
| 34 | 1.5.6 | 6'lı Prizlerin Alınması | manual | 7d | 2017-01-23 | 2017-01-31 |  |  | VİK MULTİ-LED 6lı Priz Anahtarlı,Topraklı, Çocuk Korumalı KLEMENSLİ - Beyaz [17600%] |  | 5,299.8 |
| 35 | 1.5.7 | Ampullerin Alınması | manual | 7d | 2017-01-23 | 2017-01-31 |  |  | DIALL FLORASAN AMPUL E27 15/65 WATT) [2200%] |  | 21,978 |
| 36 | 1.5.8 | Perdelerin Alınması | manual | 7d | 2017-01-23 | 2017-01-31 |  |  | Siyah Prestige Blackout Stor Perde [6600%] |  | 2,376 |
| 37 | 1.5.9 | Sınıflar ve Laboratuvarların İç Mantolama İşlemlerinin Yapılması | manual | 3d | 2017-01-19 | 2017-01-23 |  |  | İç Cephe Çalışanları; İnşaat Yöneticisi | 48h |  |
| 38 | 1.5.10 | İç Mantolama İşleminin Kuruması | manual | 1d | 2017-01-23 | 2017-01-23 |  |  |  |  |  |
| 39 | 1.5.11 | Sınıflar ve Laboratuvarların Ses Yalıtımı İşlemlerinin Yapılması | manual | 3d | 2017-01-24 | 2017-01-26 |  |  | İç Cephe Çalışanları; İnşaat Yöneticisi | 48h |  |
| 40 | 1.5.12 | Ses Yalıtım İşleminin Kuruması | manual | 1d | 2017-01-26 | 2017-01-26 |  |  |  |  |  |
| 41 | 1.5.13 | Sınıflar ve Laboratuvarların Işık Yalıtımı İşlemlerinin Yapılması | manual | 3d | 2017-01-27 | 2017-01-31 |  |  | İç Cephe Çalışanları; İnşaat Yöneticisi | 48h |  |
| 42 | 1.5.14 | Işık Yalıtım Sisteminin Kuruması | manual | 1d | 2017-01-31 | 2017-01-31 |  |  |  |  |  |
| 43 | 1.5.15 | Sınıflar ve Laboratuvarların Boya İşlemlerinin Yapılması | manual | 1d | 2017-02-01 | 2017-02-01 |  |  | İç Cephe Çalışanları; İnşaat Yöneticisi | 16h |  |
| 44 | 1.5.16 | Boyanın Kuruması | manual | 2d | 2017-02-01 | 2017-02-02 |  |  |  |  |  |
| 45 | 1.6 | **Laboratuvar ve Sınıflar İçin Malzemelerin Alım Sözleşmesinin İmzalanması** |  | 3d | 2017-02-02 | 2017-02-06 | 28 |  | Apple inc. Satın Alma Departmanı; Alauç A.Ş. Satın Alma Departmanı | 48h |  |
| 46 | 1.6.1 | İpad Pro'lar İçin Alım Sözleşmesinin İmzalanması |  | 3d | 2017-02-02 | 2017-02-06 |  | 0d |  |  |  |
| 47 | 1.6.2 | Apple Pencil'lar İçin Alım Sözleşmesinin İmzalanması | manual | 3d | 2017-02-02 | 2017-02-06 |  |  |  |  |  |
| 48 | 1.6.3 | Parmak İzi Okuyan Sensörün Alım Sözleşmesinin İmzalanması | manual | 3d | 2017-02-02 | 2017-02-06 |  |  |  |  |  |
| 49 | 1.6.4 | Basınç Ölçen Sensörün Alım Sözleşmesinin İmzalanması | manual | 3d | 2017-02-02 | 2017-02-06 |  |  |  |  |  |
| 50 | 1.6.5 | iMac satın alma sözleşmesinin imzalanması | manual | 3d | 2017-02-02 | 2017-02-06 |  |  |  |  |  |
| 51 | 1.6.6 | Elektronik güç kaynak noktaları için priz ve duy alınması İçin Alım Sözleşmesi İmzalanması | manual | 3d | 2017-02-02 | 2017-02-06 |  |  |  |  |  |

| ID | WBS | Task | Type | Duration | Start | Finish | Predecessors | Resources | Work | Cost |
| --- | --- | --- | --- | --- | --- | --- | --- | --- | --- | --- |
| 52 | 1.7 | **Laboratuvar ve Sınıflar İçin Malzemelerin Tedarik Edilmesi** |  | 30d | 2017-02-07 | 2017-03-20 | 45 | Apple inc. Satın Alma Departmanı; Alauç A.Ş. Satın Alma Departmanı | 480h | 4,181,667.8 |
| 53 | 1.7.1 | İpad Pro'ların Tedarik Edilmesi | manual | 30d | 2017-02-07 | 2017-03-20 |  | iPad Pro 12.9 [77000%] |  | 3,271,730 |
| 54 | 1.7.2 | Parmak İzi Okuyucu | manual | 30d | 2017-02-07 | 2017-03-20 |  | Parmak izi okuyucu sensor/ growe [77000%] |  | 213,752 |
| 55 | 1.7.3 | Basınç Ölçen Sensörlerin Tedarik Edilmesi | manual | 30d | 2017-02-07 | 2017-03-20 |  | HT - 163 Basınç ısı nem ölçer usb data loger [77000%] |  | 192,500 |
| 56 | 1.7.4 | Apple Pencil'ların Tedarik Edilmesi | manual | 30d | 2017-02-07 | 2017-03-20 |  | iPad Pro için Apple Pencil [77000%] |  | 291,830 |
| 57 | 1.7.5 | iMac pclerin Tedarik Edilmesi | manual | 30d | 2017-02-07 | 2017-03-20 |  | 21,5 inc retina 4k ekranlı imac [3000%] |  | 182,970 |
| 58 | 1.7.6 | **Fiber Kabloların Tedarik Edilmesi** |  | 30d | 2017-02-07 | 2017-03-20 |  |  |  | 6,372 |
| 59 | 1.7.6.1 | İç Fiber Kablonun Tedarik Edilmesi | manual | 30d | 2017-02-07 | 2017-03-20 |  | lc fiber patch kablo 3 mt [300%] |  | 372 |
| 60 | 1.7.6.2 | Dış Fiber Kablonun Tedarik Edilmesi | manual | 30d | 2017-02-07 | 2017-03-20 |  | MM-50/125 OM3 Merkezi Tüplü Çelik Zırhlı Dahili/Harici LSZH Fiber OptikKablo |  | 6,000 |
| 61 | 1.7.7 | Switchlerin Tedarik Edilmesi | manual | 30d | 2017-02-07 | 2017-03-20 |  | Zyxel XGS-4728F SWiTCH |  | 18,559.8 |
| 62 | 1.7.8 | Modemlerin Tedarik Edilmesi | manual | 30d | 2017-02-07 | 2017-03-20 |  | TP-LINK ARCHER VR900 1900 MBPS WIRELESS DUVAL BANT GIGABIT VDSL2 MODEM ROUTER [600%] |  | 3,954 |
| 63 | 1.8 | **Sınıf ve Laboratuvarların Düzeninin Oluşturulması** |  | 5d | 2017-01-06 | 2017-01-12 | 52 | Zübeyde Hanım Ortaokulu Eğitim Teknoloğu; Alauç A.Ş. Proje Yöneticisi | 80h | 450 |
| 64 | 1.8.1 | Sınıf ve Laboratuvarlarda Yerleşim Planlarının Oluşturulması | manual | 5d | 2017-01-06 | 2017-01-12 |  |  |  |  |
| 65 | 1.9 | **Yazılım Sözleşmelerinin İmzalanması** |  | 3d | 2016-11-08 | 2016-11-10 | 2 | Alauç A.Ş. Proje Yöneticisi; Zübeyde Hanım Ortaokulunun Yönetim Kurulu | 48h |  |
| 66 | 1.9.1 | Veri Okuma Yazılımının Teknik Şartnamesinin İmzalanması | manual | 3d | 2016-11-08 | 2016-11-10 |  |  |  |  |
| 67 | 1.9.2 | Veri Okuma Uygulamasının Teknik Şartnamesinin İmzalanması | manual | 3d | 2016-11-08 | 2016-11-10 |  |  |  |  |
| 68 | 1.10 | **Laboratuvar ve Sınıflar İçin Alınmış Malzemelerin Sınıfa Yerleşmesi** |  | 90d | 2017-01-06 | 2017-05-11 | 65 | Alauç A.Ş. Teknik Kurulum Ekibi | 720h | 36,000 |
| 69 | 1.10.1 | Sınıf ve Laboratuvarların Kablolama Sistemlerinin Kurulması | manual | 90d | 2017-01-06 | 2017-05-11 |  |  |  |  |
| 70 | 1.10.2 | Priz ve Duyların Yerleştirilme İşlemleri | manual | 90d | 2017-01-06 | 2017-05-11 |  |  |  |  |
| 71 | 1.10.3 | Okul Bünyesindeki Klimaların Kurulması | manual | 90d | 2017-01-06 | 2017-05-11 |  |  |  |  |
| 72 | 1.10.4 | Masalarn Düzene Göre Sınıf ve Laboratuvarlara Yerleştirilmesi | manual | 90d | 2017-01-06 | 2017-05-11 |  |  |  |  |
| 73 | 1.10.5 | Sandalyelerin Düzene Göre Sınıf ve Laboratuvarlara Yerleştirilmesi | manual | 90d | 2017-01-06 | 2017-05-11 |  |  |  |  |
| 74 | 1.10.6 | Projeksiyonların Sınıf ve Laboratuvarlara Yerleştirilmesi | manual | 90d | 2017-01-06 | 2017-05-11 |  |  |  |  |
| 75 | 1.10.7 | Akıllı Tahtaların Laboratuvar ve Sınıflara Yerleştirilmesi | manual | 90d | 2017-01-06 | 2017-05-11 |  |  |  |  |
| 76 | 1.10.8 | Sınıf ve Laboratuvarlardaki Apple Pencil Kalemlere Sensörlerin Entegre Edilmesi | manual | 90d | 2017-01-06 | 2017-05-11 |  |  |  |  |

| ID | WBS | Task | Type | Duration | Start | Finish | Predecessors | Resources | Work | Cost |
| --- | --- | --- | --- | --- | --- | --- | --- | --- | --- | --- |
| 77 | 1.11 | **İnternet Bağlantısının Yapılması** |  | 20d | 2017-01-06 | 2017-02-02 | 68 | Alauç A.Ş. Teknik Kurulum Ekibi | 160h | 36,000 |
| 78 | 1.11.1 | Fiber Kabloların Switch Yardımıyla Katlara Dağıtılması | manual | 18d | 2017-01-10 | 2017-02-02 |  |  |  |  |
| 79 | 1.11.2 | Katlardaki Modemlerin Kurulması | manual | 18d | 2017-01-10 | 2017-02-02 |  |  |  |  |
| 80 | 1.11.3 | İpad Pro'ların İnternet Bağlantılarının Yapılması | manual | 18d | 2017-01-10 | 2017-02-02 |  |  |  |  |
| 81 | 1.11.4 | iMac Pclerin İnternet Bağlantılarının Yapılması | manual | 18d | 2017-01-10 | 2017-02-02 |  |  |  |  |
| 82 | 1.12 | **İnternet Bağlantısının Test Edilmesi** |  | 17d | 2017-01-11 | 2017-02-02 | 77 | Alauç A.Ş. Yazılım Test Ekibi | 136h | 1,500 |
| 83 | 1.12.1 | İpad Pro'ların İnternet Bağlantılarının Test Edilmesi | manual | 1d | 2017-01-12 | 2017-01-12 |  |  |  |  |
| 84 | 1.12.2 | iMac Pclerin İnternet Bağlantılarının Test Edilmesi | manual | 1d | 2017-01-12 | 2017-01-12 |  |  |  |  |
| 85 | 1.13 | **Yazılımların Ekran Tasarımlarının Yapılması** |  | 15d | 2016-11-10 | 2016-11-30 | 65 | Alauç A.Ş. Yazılım Geliştirme Ekibi Lideri; Alauç A.Ş. Yazılım Mühendisleri | 240h | 176,000 |
| 86 | 1.13.1 | Veri okuma yazılımının tablet uygulamasının ekran tasarımlarının yapılması | manual | 15d | 2016-11-10 | 2016-11-30 |  |  |  |  |
| 87 | 1.13.2 | Veri okuma yazılımının bilgisayar yazılımının ekran tasarımlarının yapılması | manual | 15d | 2016-11-10 | 2016-11-30 |  |  |  |  |
| 88 | 1.14 | **Yazılımların Kodlanması** |  | 75d | 2016-11-30 | 2017-03-14 | 85 | Alauç A.Ş. Yazılım Mühendisleri | 600h | 128,000 |
| 89 | 1.14.1 | Sensör entegre edilmiş Apple pencil'dan veri elde edilmesinin kodlanması | manual | 75d | 2016-11-30 | 2017-03-14 |  |  |  |  |
| 90 | 1.14.2 | Sensör entegre edilmiş Apple pencil'dan gelen verinin okunmasının kodlanması | manual | 75d | 2016-11-30 | 2017-03-14 |  |  |  |  |
| 91 | 1.14.3 | Sensör entegre edilmiş Apple pencil'dan gelen verinin işlenmesinin kodlanması | manual | 75d | 2016-11-30 | 2017-03-14 |  |  |  |  |
| 92 | 1.14.4 | Veri okuma yazılımının tablet uygulamasının kodlaması | manual | 75d | 2016-11-30 | 2017-03-14 |  |  |  |  |
| 93 | 1.14.5 | Veri okuma yazılımının tablet uygulamasının ara yüzünün kodlaması | manual | 75d | 2016-11-30 | 2017-03-14 |  |  |  |  |
| 94 | 1.14.6 | Veri okuma yazılımının tablet uygulamasından veri alımının kodlaması | manual | 75d | 2016-11-30 | 2017-03-14 |  |  |  |  |
| 95 | 1.14.7 | Veri okuma yazılımının tablet uygulamasından veri gönderiminin kodlaması | manual | 75d | 2016-11-30 | 2017-03-14 |  |  |  |  |
| 96 | 1.14.8 | Veri okuma yazılımının veri alımının kodlanması | manual | 75d | 2016-11-30 | 2017-03-14 |  |  |  |  |
| 97 | 1.14.9 | Veri okuma yazılımının veri işlenmesinin kodlanması | manual | 75d | 2016-11-30 | 2017-03-14 |  |  |  |  |
| 98 | 1.14.10 | Veri okuma yazılımının İşlenmiş verinin anlamlandırılması için yapay zekanın kodlanması | manual | 75d | 2016-11-30 | 2017-03-14 |  |  |  |  |
| 99 | 1.14.11 | Veri okuma yazılımının İdareye gönderilecek verinin anlamlandırılması için yapay zekanın kodlanması | manual | 75d | 2016-11-30 | 2017-03-14 |  |  |  |  |
| 100 | 1.15 | **Yazılımı Ürünlere Yerleştirmek** |  | 90d | 2017-03-14 | 2017-07-17 | 65 | Alauç A.Ş. Teknik Kurulum Ekibi | 720h | 36,000 |
| 101 | 1.15.1 | Veri okuma yazılımının tabletlere kurulması | manual | 90d | 2017-03-14 | 2017-07-17 |  |  |  |  |
| 102 | 1.15.2 | Veri okuma yazılımının tablet uygulamasının ara yüzünün tabletlere kurulması | manual | 90d | 2017-03-14 | 2017-07-17 |  |  |  |  |
| 103 | 1.15.3 | Veri okuma yazılımının tablet uygulamasından veri alımının tabletlere kurulması | manual | 90d | 2017-03-14 | 2017-07-17 |  |  |  |  |
| 104 | 1.15.4 | Veri okuma yazılımının tablet uygulamasından veri gönderiminin tabletlere kurulması | manual | 90d | 2017-03-14 | 2017-07-17 |  |  |  |  |
| 105 | 1.15.5 | Veri okuma yazılımının veri alımının bilgisayarlara kurulması | manual | 90d | 2017-03-14 | 2017-07-17 |  |  |  |  |
| 106 | 1.15.6 | Veri okuma yazılımının veri işlenmesinin bilgisayarlara kurulması | manual | 90d | 2017-03-14 | 2017-07-17 |  |  |  |  |
| 107 | 1.15.7 | Veri okuma yazılımının İşlenmiş verinin anlamlandırılması için yapay zekanın kodlanması | manual | 90d | 2017-03-14 | 2017-07-17 |  |  |  |  |

| ID | WBS | Task | Type | Duration | Start | Finish | Predecessors | Total slack | Constraint | Resources | Work | Cost |
| --- | --- | --- | --- | --- | --- | --- | --- | --- | --- | --- | --- | --- |
| 108 | 1.16 | **Yazılımların Test Edilmesi** |  | 8d | 2017-07-28 | 2017-08-08 | 100 |  |  | Alauç A.Ş. Yazılım Test Ekibi | 64h | 1,500 |
| 109 | 1.16.1 | Sensör entegre edilmiş Apple pencil'dan veri elde edilmesinin kodlanmasının test edilmesi | manual | 1d | 2017-07-28 | 2017-07-28 |  |  |  |  |  |  |
| 110 | 1.16.2 | Sensör entegre edilmiş Apple pencil'dan gelen verinin okunmasının kodlanmasının test edilmesi | manual | 1d | 2017-07-29 | 2017-07-29 |  |  |  |  |  |  |
| 111 | 1.16.3 | Sensör entegre edilmiş Apple pencil'dan gelen verinin işlenmesinin kodlanmasının test edilmesi | manual | 1d | 2017-07-30 | 2017-07-30 |  |  |  |  |  |  |
| 112 | 1.16.4 | Veri okuma yazılımının tablet uygulamasının kodlamasının test edilmesi | manual | 1d | 2017-07-31 | 2017-07-31 |  |  |  |  |  |  |
| 113 | 1.16.5 | Veri okuma yazılımının tablet uygulamasının ara yüzünün kodlamasının test edilmesi | manual | 1d | 2017-08-01 | 2017-08-01 |  |  |  |  |  |  |
| 114 | 1.16.6 | Veri okuma yazılımının tablet uygulamasından veri alımının kodlamasının test edilmesi | manual | 1d | 2017-07-02 | 2017-07-02 |  |  |  |  |  |  |
| 115 | 1.16.7 | Veri okuma yazılımının tablet uygulamasından veri gönderiminin kodlamasının test edilmesi | manual | 1d | 2017-07-03 | 2017-07-03 |  |  |  |  |  |  |
| 116 | 1.16.8 | Veri okuma yazılımının veri alımının kodlanmasının test edilmesi | manual | 1d | 2017-07-04 | 2017-07-04 |  |  |  |  |  |  |
| 117 | 1.16.9 | Veri okuma yazılımının veri işlenmesinin kodlanmasının test edilmesi | manual | 1d | 2017-07-05 | 2017-07-05 |  |  |  |  |  |  |
| 118 | 1.16.10 | Veri okuma yazılımının İşlenmiş verinin anlamlandırılması için yapay zekanın kodlanmasının test edilmesi | manual | 1d | 2017-07-06 | 2017-07-06 |  |  |  |  |  |  |
| 119 | 1.16.11 | Veri okuma yazılımının İdareye gönderilecek verinin anlamlandırılması için yapay zekanın kodlanmasının test edilmesi | manual | 1d | 2017-07-07 | 2017-07-07 |  |  |  |  |  |  |
| 120 | 1.16.12 | Veri okuma yazılımının tablet uygulamasından veri alımının test edilmesinın test edilmesi | manual | 1d | 2017-07-08 | 2017-07-08 |  |  |  |  |  |  |
| 121 | 1.17 | **Eğitimlerin Hazırlanması** |  | 12d | 2017-08-08 | 2017-08-23 | 108 |  |  | Zübeyde Hanım Ortaokulu Eğitim Teknoloğu | 96h | 450 |
| 122 | 1.17.1 | Öğretmenler İçin Eğitimlerin Hazırlanması |  | 12d | 2017-08-08 | 2017-08-23 |  | 28d | start no earlier than 2017-08-08 |  |  |  |
| 123 | 1.17.2 | İdari Personele Verilecek Eğitimlerin Hazırlanması | manual | 12d | 2017-08-08 | 2017-08-23 |  |  |  |  |  |  |
| 124 | 1.17.3 | Öğrencilere Verilecek Eğitimlerin Hazırlanması | manual | 12d | 2017-08-08 | 2017-08-23 |  |  |  |  |  |  |
| 125 | 1.18 | **Bilgilendirme Sistemlerinin Kurulması** |  | 10d | 2017-08-30 | 2017-09-12 | 121 |  |  | Alauç A.Ş. Teknik Kurulum Ekibi | 80h | 36,000 |
| 126 | 1.18.1 | Veli Bilgilendirme Sisteminin Kurulması | manual | 10d | 2017-08-30 | 2017-09-12 |  |  |  |  |  |  |
| 127 | 1.18.2 | Öğretmen Bilgilendirme Sisteminin Kurulması | manual | 10d | 2017-08-30 | 2017-09-12 |  |  |  |  |  |  |
| 128 | 1.18.3 | Okul Yönetimi Bilgilendirme Sistemi Kurulması | manual | 10d | 2017-08-30 | 2017-09-12 |  |  |  |  |  |  |
| 129 | 1.19 | **Eğitimlerin Verilmesi** |  | 15d | 2017-09-12 | 2017-10-02 | 125 |  |  | Zübeyde Hanım Ortaokulu Eğitim Teknoloğu | 120h | 450 |
| 130 | 1.19.1 | Öğretmenlere Eğitimlerin Verilmesi |  | 15d | 2017-09-12 | 2017-10-02 |  | 0d |  |  |  |  |
| 131 | 1.19.2 | İdari Personele Eğitimlerin Verilmesi | manual | 15d | 2017-09-12 | 2017-10-02 |  |  |  |  |  |  |
| 132 | 1.19.3 | Öğrencilere Eğitimlerin Verilmesi | manual | 15d | 2017-09-12 | 2017-10-02 |  |  |  |  |  |  |
